# memristive CPG

Schedule from GanttProject, 2023-12-01 to 2024-10-31, baseline: rainy.
Holidays every year on 01-01, 01-02, 01-07, 02-15, 02-16, 05-01, 05-02, 11-11

## Calendars

- Project calendar: Mon-Fri working; Sat-Sun off. Exceptions (off unless hours are given): 2024-02-10 (Chinese NY).

## Schedule

| ID | WBS | Task | Type | Duration | Start | Finish | Predecessors | Complete | Baseline start | Baseline finish | Baseline duration |
| --- | --- | --- | --- | --- | --- | --- | --- | --- | --- | --- | --- |
| 1 | 1 | **B-model** |  | 51d | 2023-12-01 | 2024-02-13 |  | 9% | 2023-12-01 | 2024-02-19 | 53d |
| 2 | 1.1 | Ia STDP fix |  | 15d | 2023-12-01 | 2023-12-21 |  | 30% | 2023-12-01 | 2023-12-21 | 15d |
| 3 | 1.2 | Ia->F, E STDP |  | 3d | 2023-12-22 | 2023-12-26 | 2 | 10% | 2024-01-02 | 2024-01-05 | 3d |
| 4 | 1.3 | BS->F, E STDP |  | 2d | 2023-12-22 | 2023-12-25 | 2 | 10% | 2024-01-05 | 2024-01-08 | 2d |
| 5 | 1.4 | Cut STDP fix |  | 7d | 2023-12-27 | 2024-01-08 | 3, 4 | 1% | 2023-12-22 | 2024-01-03 | 7d |
| 6 | 1.5 | + 2nd leg |  | 2d | 2024-01-09 | 2024-01-10 | 4, 5 |  | 2024-01-09 | 2024-01-10 | 2d |
| 7 | 1.6 | Commisural Projections |  | 2d | 2024-01-11 | 2024-01-12 | 6 |  | 2024-01-11 | 2024-01-12 | 2d |
| 8 | 1.7 | Balance 2 legs |  | 2d | 2024-01-15 | 2024-01-16 | 7 |  | 2024-01-15 | 2024-01-16 | 2d |
| 9 | 1.8 | Debug 2 legs |  | 10d | 2024-01-17 | 2024-01-30 | 8 |  | 2024-01-17 | 2024-01-30 | 10d |
| 10 | 1.9 | Debug STDP complete model |  | 10d | 2024-01-31 | 2024-02-13 | 9 |  | 2024-01-31 | 2024-02-13 | 10d |
| 11 | 1.10 | Complete B-model | milestone | 0d | 2024-02-14 | 2024-02-14 | 10 |  | 2024-02-14 | 2024-02-14 | 0d |
| 12 | 2 | **Memristive devices** |  | 90d | 2023-12-06 | 2024-04-15 |  |  |  |  |  |
| 13 | 2.1 | buy silver |  | 10d | 2023-12-06 | 2023-12-19 |  | 1% |  |  |  |
| 14 | 2.2 | fabricate 1 mem |  | 5d | 2023-12-20 | 2023-12-26 | 13 |  |  |  |  |
| 15 | 2.3 | test 1 mem |  | 10d | 2023-12-27 | 2024-01-11 | 14 |  |  |  |  |
| 16 | 2.4 | fabricate 8 mem E |  | 10d | 2024-01-12 | 2024-01-25 | 15 |  |  |  |  |
| 17 | 2.5 | test 8 mem E |  | 10d | 2024-01-26 | 2024-02-08 | 16 |  |  |  |  |
| 18 | 2.6 | fubricate + 12 mems |  | 10d | 2024-02-09 | 2024-02-26 | 17 |  |  |  |  |
| 19 | 2.7 | 20 mems test F+E |  | 10d | 2024-02-27 | 2024-03-11 | 18 |  |  |  |  |
| 20 | 2.8 | fubricate 40 mems |  | 10d | 2024-03-12 | 2024-03-25 | 19 |  |  |  |  |
| 21 | 2.9 | test 40 mems |  | 15d | 2024-03-26 | 2024-04-15 | 20 |  |  |  |  |
| 22 | 2.10 | 40 mems (2 legs) | milestone | 0d | 2024-04-16 | 2024-04-16 | 21 |  |  |  |  |
| 23 | 3 | **Mem neurons** |  | 135d | 2023-12-01 | 2024-06-14 |  |  |  |  |  |
| 24 | 3.1 | negotiate mem 1 parameters |  | 1d | 2023-12-01 | 2023-12-01 |  | 100% |  |  |  |
| 25 | 3.2 | negotiate mem 2 parameters |  | 1d | 2023-12-27 | 2023-12-27 | 14, 24 |  |  |  |  |
| 26 | 3.3 | Rework mem neurons schematic |  | 10d | 2023-12-28 | 2024-01-12 | 25 | 1% |  |  |  |
| 27 | 3.4 | Design PCB E neurons |  | 7d | 2024-01-15 | 2024-01-23 | 26 |  |  |  |  |
| 28 | 3.5 | Design PCB F neurons |  | 7d | 2024-01-24 | 2024-02-01 | 27 |  |  |  |  |
| 29 | 3.6 | Design PCB InE, InF |  | 5d | 2024-02-02 | 2024-02-08 | 28 |  |  |  |  |
| 30 | 3.7 | Design PCB 2nd leg |  | 10d | 2024-02-09 | 2024-02-26 | 29 |  |  |  |  |
| 31 | 3.8 | Simulation |  | 2d | 2024-02-27 | 2024-02-28 | 30 |  |  |  |  |
| 32 | 3.9 | Order 1st PCBs |  | 10d | 2024-02-29 | 2024-03-13 | 31 |  |  |  |  |
| 33 | 3.10 | Delivery 1st PCBs |  | 15d | 2024-03-14 | 2024-04-03 | 32 |  |  |  |  |
| 34 | 3.11 | Solder 1st PCBs |  | 20d | 2024-04-04 | 2024-05-03 | 33 |  |  |  |  |
| 35 | 3.12 | Redesign PCBs |  | 5d | 2024-05-06 | 2024-05-10 | 34 |  |  |  |  |
| 36 | 3.13 | Order 2nd PCBs |  | 10d | 2024-05-13 | 2024-05-24 | 35 |  |  |  |  |
| 37 | 3.14 | Solder 2nd PCBs |  | 10d | 2024-05-27 | 2024-06-07 | 36 |  |  |  |  |
| 38 | 3.15 | Test 2nd PCBs |  | 5d | 2024-06-10 | 2024-06-14 | 37 |  |  |  |  |
| 39 | 3.16 | Mem neurons | milestone | 0d | 2024-06-17 | 2024-06-17 | 38 |  |  |  |  |

| ID | WBS | Task | Type | Duration | Start | Finish | Predecessors |
| --- | --- | --- | --- | --- | --- | --- | --- |
| 40 | 4 | **Neurons+mems integration** |  | 65d | 2024-06-17 | 2024-09-13 | 1, 12, 23 |
| 41 | 4.1 | deliver mem neurons |  | 20d | 2024-06-17 | 2024-07-12 |  |
| 42 | 4.2 | integrate 1 neuron + 1 mem |  | 5d | 2024-07-15 | 2024-07-19 | 41 |
| 43 | 4.3 | test integration 1n + 1m |  | 5d | 2024-07-22 | 2024-07-26 | 42 |
| 44 | 4.4 | integrate 1 RG 4 neurons |  | 5d | 2024-07-29 | 2024-08-02 | 43 |
| 45 | 4.5 | test integrated RG |  | 10d | 2024-08-05 | 2024-08-16 | 44 |
| 46 | 4.6 | integrate 1 leg |  | 5d | 2024-08-19 | 2024-08-23 | 45 |
| 47 | 4.7 | test 1 leg |  | 5d | 2024-08-26 | 2024-08-30 | 46 |
| 48 | 4.8 | integrate 2 legs |  | 5d | 2024-09-02 | 2024-09-06 | 47 |
| 49 | 4.9 | test 2 legs |  | 5d | 2024-09-09 | 2024-09-13 | 48 |
| 50 | 4.10 | integrated mem CPG | milestone | 0d | 2024-09-16 | 2024-09-16 | 49 |
| 51 | 5 | **Rat validation** |  | 33d | 2024-09-16 | 2024-10-30 | 40 |
| 52 | 5.1 | deliver mem CPG |  | 20d | 2024-09-16 | 2024-10-11 |  |
| 53 | 5.2 | test mem CPG |  | 5d | 2024-10-14 | 2024-10-18 | 52 |
| 54 | 5.3 | integrate outs F+E |  | 3d | 2024-10-21 | 2024-10-23 | 53 |
| 55 | 5.4 | validate outs on rat |  | 5d | 2024-10-24 | 2024-10-30 | 54 |
| 56 | 5.5 | validated mem CPG | milestone | 0d | 2024-10-31 | 2024-10-31 | 55 |
